# 种子影像组

Schedule from a web Gantt chart, 2023-11-01 to 2025-06-06.
Saturdays and Sundays are off

## Schedule

| ID | WBS | Task | Duration | Start | Finish | Complete | inPeople |
| --- | --- | --- | --- | --- | --- | --- | --- |
| 2 | 1 | 种子影像组学综述论文 | 263d | 2023-11-01 | 2024-11-01 | 90% | 宋安然 |
| 3 | 2 | **多尺度、多模态种子影像观测体系构建** | 348d | 2023-11-01 | 2025-02-28 | 38% |  |
| 4 | 2.1 | 设备使用方法及数据获取标准 | 22d | 2023-11-01 | 2023-11-30 | 80% |  |
| 5 | 2.2 | 获取玉米种子标准数据集 | 22d | 2024-09-02 | 2024-10-01 | 10% |  |
| 6 | 2.3 | 获取水稻种子标准数据集 | 22d | 2024-08-30 | 2024-09-30 |  |  |
| 7 | 2.4 | 获取花生种子标准数据集 | 11d | 2023-12-01 | 2023-12-15 | 50% |  |
| 8 | 2.5 | 获取小麦种子标准数据集 | 22d | 2024-08-30 | 2024-09-30 | 10% |  |
| 9 | 2.6 | 代谢脂质参考值获取 | 100d | 2024-09-02 | 2025-01-17 | 20% | 王双 |
| 10 | 2.7 | 高通量种子表型获取平台 | 130d | 2024-09-02 | 2025-02-28 | 60% | 王传宇、杨斯 |
| 11 | 3 | **多模态大数据解析** | 285d | 2023-12-01 | 2025-01-02 | 16% |  |
| 12 | 3.1 | **（项目任务）花生预测油脂含量论文1篇** | 283d | 2023-12-01 | 2024-12-31 | 42% | 宋安然 |
| 13 | 3.1.1 | 数据获取 | 21d | 2023-12-01 | 2023-12-29 | 100% |  |
| 14 | 3.1.2 | 多模态数据处理与模型构建 | 22d | 2024-05-01 | 2024-05-30 | 30% |  |
| 15 | 3.1.3 | 形成论文1篇 | 43d | 2024-11-01 | 2024-12-31 | 20% |  |
| 16 | 3.2 | **种皮表型特征互作网络构建与基因组关联分析** | 134d | 2024-07-01 | 2025-01-02 | 19% | 王艳茹 |
| 17 | 3.2.1 | 样本前处理第一季 | 34d | 2024-07-01 | 2024-08-15 | 100% |  |
| 18 | 3.2.2 | 样本前处理第二季 | 34d | 2024-09-02 | 2024-10-17 |  |  |
| 19 | 3.2.3 | 表型高通量提取 | 14d | 2024-08-29 | 2024-09-17 | 30% |  |
| 20 | 3.2.4 | 表型互作网络与基因组关联分析 | 14d | 2024-09-16 | 2024-10-03 |  |  |
| 21 | 3.2.5 | 代谢组学与基因组关联分析 | 14d | 2024-09-16 | 2024-10-03 |  |  |
| 22 | 3.2.6 | 论文2篇 | 90d | 2024-08-30 | 2025-01-02 |  |  |
| 23 | 3.3 | **种胚表型特征互作网络构建** | 134d | 2024-07-01 | 2025-01-02 |  | 张常钰 |
| 24 | 3.3.1 | 样本前处理第一季 | 34d | 2024-07-01 | 2024-08-15 |  |  |
| 25 | 3.3.2 | 样本前处理第二季 | 34d | 2024-09-02 | 2024-10-17 |  |  |
| 26 | 3.3.3 | 表型高通量提取 | 14d | 2024-08-29 | 2024-09-17 |  |  |
| 27 | 3.3.4 | 表型互作网络与基因组关联分析 | 14d | 2024-09-16 | 2024-10-03 |  |  |
| 28 | 3.3.5 | 论文2篇 | 90d | 2024-08-30 | 2025-01-02 |  |  |

| ID | WBS | Task | Duration | Start | Finish | Complete | inPeople |
| --- | --- | --- | --- | --- | --- | --- | --- |
| 29 | 4 | **表型关联知识和语义特征** | 78d | 2024-10-15 | 2025-01-30 |  |  |
| 30 | 4.1 | **跨尺度表型互作网络** | 14d | 2024-10-15 | 2024-11-01 |  |  |
| 31 | 4.1.1 | 器官尺度 | 14d | 2024-10-15 | 2024-11-01 |  | 宋安然 |
| 32 | 4.1.2 | 种皮 | 14d | 2024-10-15 | 2024-11-01 |  | 王艳茹 |
| 33 | 4.1.3 | 种胚 | 14d | 2024-10-15 | 2024-11-01 |  | 张常钰 |
| 34 | 4.1.4 | 胚乳 | 14d | 2024-10-15 | 2024-11-01 |  | 王娟 |
| 35 | 4.2 | **知识挖掘** | 21d | 2024-11-01 | 2024-11-29 |  |  |
| 36 | 4.2.1 | 相关性等分析 | 21d | 2024-11-01 | 2024-11-29 |  |  |
| 37 | 4.2.2 | 知识图谱分析 | 21d | 2024-11-01 | 2024-11-29 |  | 李婷 |
| 38 | 4.3 | **基于语义特征的种子表型知识图谱数据库构建** | 65d | 2024-11-01 | 2025-01-30 |  | 李婷 |
| 39 | 4.3.1 | 指标与数据提供 | 7d | 2024-11-01 | 2024-11-11 |  | 小组 |
| 40 | 4.3.2 | 知识图谱数据库构建 | 20d | 2024-11-11 | 2024-12-06 |  |  |
| 41 | 4.3.3 | 知识图谱分析挖掘知识 | 20d | 2024-12-06 | 2025-01-02 |  |  |
| 42 | 4.3.4 | 知识图谱知识挖掘论文1篇 | 40d | 2024-12-06 | 2025-01-30 |  |  |
| 43 | 5 | **基于种子大模型的种子表型精准鉴定** | 265d | 2024-06-03 | 2025-06-06 | 6% | 宋安然 |
| 44 | 5.1 | **大模型嫁接小模型技术突破** | 59d | 2024-10-01 | 2024-12-20 |  | 王娟、杨斯 |
| 45 | 5.1.1 | SAM分割五种种子 | 40d | 2024-10-01 | 2024-11-25 |  |  |
| 46 | 5.1.2 | 解析小模型嫁接 | 20d | 2024-11-25 | 2024-12-20 |  |  |
| 47 | 5.2 | **基于高光谱图像的组分解析大模型** | 265d | 2024-06-03 | 2025-06-06 | 7% | 宋安然 |
| 48 | 5.2.1 | **大模型关键技术探究** | 22d | 2024-06-03 | 2024-07-02 |  |  |
| 49 | 5.2.1.1 | 基于深度学习油脂含量预测模型 | 1d | 2024-06-03 | 2024-06-03 |  |  |
| 50 | 5.2.1.2 | 基于深度学习油脂含量预测论文1篇 | 22d | 2024-06-03 | 2024-07-02 |  |  |
| 51 | 5.2.2 | **组分解析大模型构建** | 200d | 2024-09-02 | 2025-06-06 | 8% |  |
| 52 | 5.2.2.1 | **数据准备** | 105d | 2024-09-02 | 2025-01-24 | 20% |  |
| 53 | 5.2.2.1.1 | 多年多点高光谱图像 | 21d | 2024-09-02 | 2024-09-30 | 50% |  |
| 54 | 5.2.2.1.2 | 核磁油脂含量获取 | 16d | 2024-09-09 | 2024-09-30 | 20% |  |
| 55 | 5.2.2.1.3 | 油脂组学数据获取 | 60d | 2024-11-04 | 2025-01-24 | 10% |  |

| ID | WBS | Task | Duration | Start | Finish | Complete | inPeople |
| --- | --- | --- | --- | --- | --- | --- | --- |
| 56 | 5.2.2.2 | **模型主要技术突破** | 41d | 2024-10-17 | 2024-12-12 | 5% |  |
| 57 | 5.2.2.2.1 | 3D掩蔽技术 | 21d | 2024-10-17 | 2024-11-14 | 10% |  |
| 58 | 5.2.2.2.2 | 多目标重建技术 | 21d | 2024-11-14 | 2024-12-12 |  |  |
| 59 | 5.2.2.3 | 模型构建与开发 | 40d | 2024-12-12 | 2025-02-05 |  |  |
| 60 | 5.2.2.4 | **模型评估与测试** | 60d | 2025-02-12 | 2025-05-06 |  |  |
| 61 | 5.2.2.4.1 | 油脂含量测试 | 20d | 2025-02-12 | 2025-03-11 |  |  |
| 62 | 5.2.2.4.2 | 其他脂质组测试 | 60d | 2025-02-12 | 2025-05-06 |  |  |
| 63 | 5.2.2.5 | 模型部署 | 20d | 2025-05-12 | 2025-06-06 |  | 吴升 |
